Schedule from MS Project, 2020-11-10 to 2020-11-27.

## Calendars

- Standard: Mon-Fri 08:00-12:00, 13:00-17:00; Sat-Sun off.

## Resources

| Resource |
| --- |
| kien.do |
| an.tranvan |
| anhpd |
| quy.dinhduc |

## Schedule

| ID | WBS | Task | Duration | Start | Finish | Predecessors | Total slack | Free slack | Constraint | Resources | Work |
| --- | --- | --- | --- | --- | --- | --- | --- | --- | --- | --- | --- |
| 1 | 1 | Collect Requirement | 2h | 2020-11-10 08:00 | 2020-11-10 10:00 |  | 10.25d | 0d | start no earlier than 2020-11-10 08:00 | kien.do | 2h |
| 2 | 2 | Chuẩn bị môi trường code, call log tạo DB | 4h | 2020-11-10 10:00 | 2020-11-10 15:00 | 1 | 10.25d |  |  | kien.do | 4h |
| 3 | 3 | **Design DB** | 2.5d | 2020-11-10 08:00 | 2020-11-12 12:00 |  | 0d |  |  |  | 20h |
| 4 | 3.1 | Design DB | 12h | 2020-11-10 08:00 | 2020-11-11 12:00 |  | 0d |  | start no earlier than 2020-11-10 08:00 | an.tranvan | 12h |
| 5 | 3.2 | Review | 4h | 2020-11-11 13:00 | 2020-11-11 17:00 | 4 | 0d |  |  | kien.do | 4h |
| 6 | 3.3 | Update | 4h | 2020-11-12 08:00 | 2020-11-12 12:00 | 5 | 0d |  |  | an.tranvan | 4h |
| 7 | 4 | Study ElectronJS | 16h | 2020-11-10 08:00 | 2020-11-11 17:00 |  | 2.5d | 0d | start no earlier than 2020-11-10 08:00 | anhpd; quy.dinhduc | 32h |
| 8 | 5 | Login Site | 16h | 2020-11-12 08:00 | 2020-11-13 17:00 | 7 | 3.5d | 0d |  | anhpd | 16h |
| 9 | 6 | **Admin Site** | 9d | 2020-11-12 08:00 | 2020-11-24 17:00 |  | 0d |  |  |  | 96h |
| 10 | 6.1 | **Danh sách phiếu OT** | 3.5d | 2020-11-12 13:00 | 2020-11-17 17:00 |  | 0d |  |  |  | 28h |
| 11 | 6.1.1 | Màn hình danh sách phiếu OT | 8h | 2020-11-12 13:00 | 2020-11-13 12:00 | 6 | 0d |  |  | an.tranvan | 8h |
| 12 | 6.1.2 | Tính năng tìm kiếm theo mã dự án | 8h | 2020-11-13 13:00 | 2020-11-16 12:00 | 11 | 0d |  |  | an.tranvan | 8h |
| 13 | 6.1.3 | Tính năng tìm kiếm theo ngày/tháng | 8h | 2020-11-16 13:00 | 2020-11-17 12:00 | 12 | 0d |  |  | an.tranvan | 8h |
| 14 | 6.1.4 | Tính năng lock/unlock chỉnh sửa phiếu OT | 4h | 2020-11-17 13:00 | 2020-11-17 17:00 | 13 | 0d |  |  | an.tranvan | 4h |
| 15 | 6.2 | **Chi tiết phiếu OT** | 3.5d | 2020-11-12 08:00 | 2020-11-17 12:00 |  | 2.5d |  |  |  | 28h |
| 16 | 6.2.1 | Màn hình chi tiết phiếu OT | 24h | 2020-11-12 08:00 | 2020-11-16 17:00 | 7 | 2.5d | 0d |  | quy.dinhduc | 24h |
| 17 | 6.2.2 | Tính năng approve phiếu OT | 4h | 2020-11-17 08:00 | 2020-11-17 12:00 | 16 | 2.5d | 0d |  | quy.dinhduc | 4h |
| 18 | 6.3 | **Quản lý account** | 5d | 2020-11-18 08:00 | 2020-11-24 17:00 |  | 0d |  |  |  | 40h |
| 19 | 6.3.1 | Màn hình danh sách account | 8h | 2020-11-18 08:00 | 2020-11-18 17:00 | 14 | 0d |  |  | an.tranvan | 8h |
| 20 | 6.3.2 | Thêm/sửa/xóa/phân quyền | 16h | 2020-11-19 08:00 | 2020-11-20 17:00 | 19 | 0d |  |  | an.tranvan | 16h |
| 21 | 6.3.3 | Thống kê thời gian OT của mỗi account theo tháng | 16h | 2020-11-23 08:00 | 2020-11-24 17:00 | 20 | 0d |  |  | an.tranvan | 16h |
| 22 | 7 | **User Site** | 3.75d | 2020-11-16 08:00 | 2020-11-19 15:00 |  | 4.25d |  |  |  | 28h |
| 23 | 7.1 | Màn hình danh sách phiếu OT (clone từ admin site) | 6h | 2020-11-16 08:00 | 2020-11-16 15:00 | 11, 8 | 1.5d | 0.25d |  | anhpd | 6h |
| 24 | 7.2 | Màn hình chỉnh sửa phiếu OT (clone từ màn hình chi tiết của admin site) | 6h | 2020-11-17 08:00 | 2020-11-17 15:00 | 23, 16 | 1.25d | 0d |  | anhpd | 6h |
| 25 | 7.3 | Thêm/sửa/xóa thời gian OT | 16h | 2020-11-17 15:00 | 2020-11-19 15:00 | 24 | 3.25d |  |  | anhpd | 16h |

Notes:
- 8: Login bằng LDAP thông qua AD và lưu thông tin login vào DB
- 14: Cuối ngày thứ 2 của tuần tiếp theo th́ admin sẽ lock các phiếu OT của tuần trước lại để tính giờ OT. / Khi lock th́ các PM sẽ không c̣n chỉnh sửa được nữa

| ID | WBS | Task | Duration | Start | Finish | Predecessors | Total slack | Free slack | Resources | Work |
| --- | --- | --- | --- | --- | --- | --- | --- | --- | --- | --- |
| 26 | 8 | **Send Mail (TBD)** | 2d | 2020-11-19 15:00 | 2020-11-23 15:00 |  | 4.25d |  |  | 16h |
| 27 | 8.1 | User gửi mail request OT có đính kèm file | 16h | 2020-11-19 15:00 | 2020-11-23 15:00 | 25 | 1.25d |  | anhpd | 16h |
| 28 | 9 | **Import/Export** | 8.5d | 2020-11-17 13:00 | 2020-11-27 17:00 |  | 0d |  |  | 72h |
| 29 | 9.1 | User export phiếu OT thành excel file | 24h | 2020-11-17 13:00 | 2020-11-20 12:00 | 17 | 2.5d | 0d | quy.dinhduc | 24h |
| 30 | 9.2 | Import phiếu OT từ excel | 24h | 2020-11-20 13:00 | 2020-11-25 12:00 | 29 | 2.5d |  | quy.dinhduc | 24h |
| 31 | 9.3 | Admin export danh sách OT tháng ra excel file | 24h | 2020-11-25 08:00 | 2020-11-27 17:00 | 21 | 0d |  | an.tranvan | 24h |

Notes:
- 27: Sử dụng Node Mailer
- 29: Sử dụng module xlsx, duy anh đă từng làm rồi
